Schedule from MS Project, 2013-10-23 to 2015-01-05, A marks actual dates.
项目进度计划

## Calendars

- 标准: Mon-Fri 08:00-12:00, 13:00-17:00; Sat-Sun off. Exceptions (off unless hours are given): 2013-12-28 to 2013-12-29 08:00-12:00, 13:00-17:00.

## Resources

| Resource |
| --- |
| 王艺 |
| 陈琨 |
| 徐明 |
| 朱高 |
| 熊言敏 |
| 李茂全 |
| 罗威 |
| 沈伟 |
| 陈姣龙 |
| 丽丽 |
| 全体项目组成员 |

## Schedule

| ID | WBS | Task | Duration | Start | Finish | Predecessors | Complete | Remaining | Total slack | Free slack | Constraint | Resources | Work | Actual work |
| --- | --- | --- | --- | --- | --- | --- | --- | --- | --- | --- | --- | --- | --- | --- |
| 1 | 1 | **瑞才科技教学综合管理平台** | 316d? | 2013-10-23 A | 2015-01-05 |  |  | 314.58d? | 0d |  |  | 王艺 | 5120h | 12.52h |
| 2 | 1.1 | **1.项目启动** | 198d? | 2013-10-23 A | 2014-07-23 |  | 12% | 174.71d? | 118d |  |  | 王艺 | 1704h | 8h |
| 3 | 1.1.1 | 组织项目交流会(目标、技术与资源讨论) | 1.5d? | 2014-07-14 A | 2014-07-15 |  |  | 1.5d? | 124.25d |  | start no earlier than 2013-10-21 | 朱高; 王艺; 陈琨; 徐明 | 24h |  |
| 4 | 1.1.2 | 项目进度计划、资源计划制定 | 1d? | 2013-10-23 | 2013-10-23 |  |  |  | 315d |  | finish no earlier than 2013-10-23 | 王艺 | 8h |  |
| 5 | 1.1.3 | 项目启动报告 | 1d? | 2013-10-24 | 2013-10-24 |  |  |  | 193d | 191d | start no earlier than 2013-10-24 | 王艺 | 8h |  |
| 6 | 1.1.4 | 项目计划评审与完善（需求与设计） | 2d | 2014-07-17 A | 2014-07-22 | 5 |  | 2d | 119d |  | finish no earlier than 2013-10-28 | 王艺; 陈琨 | 32h |  |
| 7 | 1.1.5 | 业务及工作培训 | 2d | 2014-07-21 A | 2014-07-22 |  | 50% | 1d | 0d |  | start no earlier than 2013-10-28 | 王艺 | 16h | 8h |
| 8 | 1.1.6 | 需求调研,报告整理 | 1d | 2014-07-22 A | 2014-07-23 | 7 |  | 1d | 118d |  | finish no earlier than 2014-07-23 | 王艺; 朱高; 陈琨; 徐明 | 32h |  |
| 9 | 1.2 | **2.需求分析** | 194d? | 2013-12-19 A | 2014-09-12 |  |  | 194d? | 81d |  |  |  | 1872h |  |
| 10 | 1.2.1 | 教务,班主任现场调研 | 0.25d? | 2014-07-24 | 2014-07-24 |  |  |  | 9d | 0d | finish no earlier than 2014-07-24 | 王艺; 朱高; 陈琨; 徐明 | 8h |  |
| 11 | 1.2.2 | 讲师现场调研 | 2d | 2014-07-25 | 2014-07-28 | 10 |  |  | 9d |  |  | 王艺; 朱高; 陈琨; 徐明 | 64h |  |
| 12 | 1.2.3 | 需求整理、需求说明书编制 | 8d | 2014-08-11 A | 2014-08-20 | 11 |  | 8d | 89d | 0d | finish no earlier than 2014-08-15 | 王艺; 陈琨 | 112h |  |
| 13 | 1.2.4 | 需求评审及完善（第一次内部评审） | 9d | 2014-08-21 | 2014-09-02 | 12 |  |  | 89d |  | finish no earlier than 2014-07-31 | 全体项目组成员 | 72h |  |
| 14 | 1.2.5 | **需求评审及完善（第一次现场评审）** | 194d | 2013-12-19 | 2014-09-12 |  |  |  | 81d |  |  |  | 1616h |  |
| 15 | 1.2.5.1 | **3.详细功能设计** | 194d | 2013-12-19 | 2014-09-12 |  |  |  | 81d |  |  | 王艺 | 1616h |  |
| 16 | 1.2.5.1.1 | **3.1在线评教子系统** | 179.5d | 2013-12-19 | 2014-08-25 |  |  |  | 95.5d |  |  |  |  |  |
| 17 | 1.2.5.1.1.1 | **3.1在线评教** | 179.5d | 2013-12-19 | 2014-08-25 |  |  |  | 95.5d |  |  |  |  |  |
| 18 | 1.2.5.1.1.1.1 | 查看老师详情 | 0.5d | 2014-08-25 | 2014-08-25 |  |  |  | 95.5d |  | start no earlier than 2014-08-25 |  |  |  |
| 19 | 1.2.5.1.1.1.2 | 老师评价 | 0.5d | 2013-12-19 | 2013-12-19 |  |  |  | 274d | 0d | start no earlier than 2013-12-19 |  |  |  |
| 20 | 1.2.5.1.1.1.3 | 留言板 | 0.5d | 2013-12-19 | 2013-12-19 | 19 |  |  | 274d |  | start no earlier than 2013-12-19 |  |  |  |
| 21 | 1.2.5.1.2 | **3.2主站侧（集团侧）** | 7.5d | 2014-08-25 | 2014-09-03 |  |  |  | 88.5d |  |  |  |  |  |
| 22 | 1.2.5.1.2.1 | **3.2.1系统管理** | 2d | 2014-08-25 | 2014-08-26 |  |  |  | 94d |  |  |  |  |  |
| 23 | 1.2.5.1.2.1.1 | 权限管理 | 0.5d | 2014-08-25 | 2014-08-25 |  |  |  | 95.5d |  | start no earlier than 2014-08-25 |  |  |  |
| 24 | 1.2.5.1.2.1.2 | 中英文切换 | 0.5d | 2014-08-25 | 2014-08-25 |  |  |  | 95d |  | start no earlier than 2014-08-25 |  |  |  |
| 25 | 1.2.5.1.2.1.3 | 预警管理 | 0.5d | 2014-08-26 | 2014-08-26 |  |  |  | 94.5d |  | start no earlier than 2014-08-26 |  |  |  |
| 26 | 1.2.5.1.2.1.4 | 日志管理 | 0.5d | 2014-08-26 | 2014-08-26 |  |  |  | 94d |  | start no earlier than 2014-08-26 |  |  |  |

| ID | WBS | Task | Duration | Start | Finish | Predecessors | Total slack | Free slack | Constraint | Resources | Work |
| --- | --- | --- | --- | --- | --- | --- | --- | --- | --- | --- | --- |
| 27 | 1.2.5.1.2.2 | **3.2.2数据管理** | 3.5d | 2014-08-29 | 2014-09-03 |  | 88.5d |  |  |  |  |
| 28 | 1.2.5.1.2.2.1 | **数据接收** | 2.5d | 2014-08-29 | 2014-09-02 |  | 89.5d |  |  |  |  |
| 29 | 1.2.5.1.2.2.1.1 | 上报任务定义 | 0.5d | 2014-08-29 | 2014-08-29 |  | 91.5d |  | start no earlier than 2014-08-29 |  |  |
| 30 | 1.2.5.1.2.2.1.2 | 上报策略设置 | 0.5d | 2014-09-01 | 2014-09-01 |  | 89.5d | 0d | start no earlier than 2014-09-01 |  |  |
| 31 | 1.2.5.1.2.2.1.3 | 上报过程监控 | 0.5d | 2014-09-01 | 2014-09-01 | 30 | 89.5d | 0d |  |  |  |
| 32 | 1.2.5.1.2.2.1.4 | 上报日志管理 | 0.5d | 2014-09-02 | 2014-09-02 | 31 | 89.5d |  |  |  |  |
| 33 | 1.2.5.1.2.2.1.5 | 招时与对时 | 0.5d | 2014-09-02 | 2014-09-02 |  | 89.5d |  | start no earlier than 2014-09-02 |  |  |
| 34 | 1.2.5.1.2.2.2 | **数据维护** | 0.5d | 2014-09-03 | 2014-09-03 |  | 88.5d |  |  |  |  |
| 35 | 1.2.5.1.2.2.2.1 | 指标项定义 | 0.5d | 2014-09-03 | 2014-09-03 |  | 88.5d |  | start no earlier than 2014-09-03 |  |  |
| 36 | 1.2.5.1.2.2.2.2 | 数据查询 | 0.5d | 2014-09-03 | 2014-09-03 |  | 88.5d |  | start no earlier than 2014-09-03 |  |  |
| 37 | 1.2.5.1.2.3 | **3.2.3实时监测** | 0.5d | 2014-08-27 | 2014-08-27 |  | 93.5d |  |  |  |  |
| 38 | 1.2.5.1.2.3.1 | 实时数据监测 | 0.5d | 2014-08-27 | 2014-08-27 |  | 93.5d |  | start no earlier than 2014-08-27 |  |  |
| 39 | 1.2.5.1.2.4 | **3.2.4数据分析** | 1.5d | 2014-08-27 | 2014-08-28 |  | 92.5d |  |  |  |  |
| 40 | 1.2.5.1.2.4.1 | 综合排名对比分析模型 | 0.5d | 2014-08-27 | 2014-08-27 |  | 93.5d |  | start no earlier than 2014-08-27 |  |  |
| 41 | 1.2.5.1.2.4.2 | 月度分析展现模型 | 0.5d | 2014-08-28 | 2014-08-28 |  | 92.5d |  | start no earlier than 2014-08-28 |  |  |
| 42 | 1.2.5.1.2.5 | **3.2.5综合查询** | 1.5d | 2014-08-28 | 2014-08-29 |  | 91.5d |  |  |  |  |
| 43 | 1.2.5.1.2.5.1 | 日报查询 | 0.5d | 2014-08-28 | 2014-08-28 |  | 92.5d |  | start no earlier than 2014-08-28 |  |  |
| 44 | 1.2.5.1.2.5.2 | 月报查询 | 0.5d | 2014-08-29 | 2014-08-29 |  | 91.5d |  | start no earlier than 2014-08-29 |  |  |
| 45 | 1.2.5.1.2.5.3 | 年报及年度总结 | 0.5d | 2014-08-29 | 2014-08-29 |  | 91.5d |  | start no earlier than 2014-08-29 |  |  |
| 46 | 1.2.5.1.3 | 3.8技术设计补充完善 | 1d | 2014-09-04 | 2014-09-04 |  | 81d | 0d | start no earlier than 2014-09-04 | 朱高; 王艺 | 16h |
| 47 | 1.2.5.1.4 | 3.9系统详设内部评审与完善 | 4d | 2014-09-05 | 2014-09-10 | 46 | 81d | 0d |  | 朱高 | 32h |
| 48 | 1.2.5.1.5 | 3.10系统详设客户评审（邮件提交） | 2d | 2014-09-11 | 2014-09-12 | 47 | 81d |  |  | 王艺 | 16h |
| 49 | 1.3 | **4.系统功能开发** | 36d? | 2014-08-25 | 2014-10-13 |  | 60d |  |  |  |  |
| 50 | 1.3.1 | **4.1在线评教子系统** | 30d | 2014-08-25 | 2014-10-03 |  | 66d |  |  |  |  |
| 51 | 1.3.1.1 | **3.1数据采集** | 25d | 2014-09-01 | 2014-10-03 |  | 66d |  |  |  |  |
| 52 | 1.3.1.1.1 | 通州热电厂数据采集接口 | 5d | 2014-09-01 | 2014-09-05 |  | 66d | 0d | start no earlier than 2014-09-01 |  |  |
| 53 | 1.3.1.1.2 | 海安热电厂数据采集接口 | 5d | 2014-09-08 | 2014-09-12 | 52 | 66d | 0d | start no earlier than 2013-12-19 |  |  |
| 54 | 1.3.1.1.3 | 南通热电厂数据采集接口 | 5d | 2014-09-15 | 2014-09-19 | 53 | 66d | 0d | start no earlier than 2013-12-18 |  |  |
| 55 | 1.3.1.1.4 | 普光热电厂数据采集接口 | 5d | 2014-09-22 | 2014-09-26 | 54 | 66d | 0d | start no earlier than 2013-12-18 |  |  |
| 56 | 1.3.1.1.5 | 金桥热电厂数据采集接口 | 5d | 2014-09-29 | 2014-10-03 | 55 | 66d |  | start no earlier than 2013-12-19 |  |  |

| ID | WBS | Task | Duration | Start | Finish | Predecessors | Total slack | Free slack | Constraint |
| --- | --- | --- | --- | --- | --- | --- | --- | --- | --- |
| 57 | 1.3.1.2 | **3.2数据上报通讯** | 5d | 2014-08-25 | 2014-08-29 |  | 91d |  |  |
| 58 | 1.3.1.2.1 | 数据上报通讯接口 | 5d | 2014-08-25 | 2014-08-29 |  | 91d |  | start no earlier than 2014-08-25 |
| 59 | 1.3.2 | **4.2教务管理子系统** | 15d? | 2014-09-01 | 2014-09-19 |  | 76d |  |  |
| 60 | 1.3.2.1 | **3.2.1系统管理(发电经营系统集成)** | 11d? | 2014-09-01 | 2014-09-15 |  | 80d |  |  |
| 61 | 1.3.2.1.1 | 权限管理 | 3d | 2014-09-01 | 2014-09-03 |  | 80d | 0d | start no earlier than 2014-09-01 |
| 62 | 1.3.2.1.2 | 中英文切换 | 2d | 2014-09-04 | 2014-09-05 | 61 | 80d | 0d |  |
| 63 | 1.3.2.1.3 | 预警管理 | 3d | 2014-09-08 | 2014-09-10 | 62 | 80d | 0d |  |
| 64 | 1.3.2.1.4 | 日志管理 | 2d | 2014-09-11 | 2014-09-12 | 63 | 80d | 0d |  |
| 65 | 1.3.2.1.5 | 单元测试与功能完善 | 1d? | 2014-09-15 | 2014-09-15 | 64 | 80d |  |  |
| 66 | 1.3.2.2 | **3.2.2数据管理** | 15d? | 2014-09-01 | 2014-09-19 |  | 76d |  |  |
| 67 | 1.3.2.2.1 | **数据接收** | 12d? | 2014-09-01 | 2014-09-16 |  | 79d |  |  |
| 68 | 1.3.2.2.1.1 | 上报任务定义 | 3d | 2014-09-01 | 2014-09-03 |  | 88d |  | start no earlier than 2014-09-01 |
| 69 | 1.3.2.2.1.2 | 上报策略设置 | 2d | 2014-09-04 | 2014-09-05 |  | 81d | 0d | start no earlier than 2014-09-04 |
| 70 | 1.3.2.2.1.3 | 上报过程监控 | 3d | 2014-09-08 | 2014-09-10 | 69 | 81d | 0d | start no earlier than 2014-09-08 |
| 71 | 1.3.2.2.1.4 | 上报日志管理 | 2d | 2014-09-11 | 2014-09-12 | 70 | 81d |  | start no earlier than 2014-09-11 |
| 72 | 1.3.2.2.1.5 | 招时与对时 | 1d? | 2014-09-15 | 2014-09-15 |  | 79d | 0d | start no earlier than 2014-09-15 |
| 73 | 1.3.2.2.1.6 | 单元测试与功能完善 | 1d? | 2014-09-16 | 2014-09-16 | 72 | 79d |  |  |
| 74 | 1.3.2.2.2 | **数据维护** | 2d? | 2014-09-18 | 2014-09-19 |  | 76d |  |  |
| 75 | 1.3.2.2.2.1 | 指标项定义 | 1d | 2014-09-19 | 2014-09-19 | 76 | 76d |  |  |
| 76 | 1.3.2.2.2.2 | 数据查询 | 1d? | 2014-09-18 | 2014-09-18 |  | 76d | 0d | start no earlier than 2014-09-18 |
| 77 | 1.3.2.2.2.3 | 单元测试与功能完善 | 1d? | 2014-09-19 | 2014-09-19 |  | 76d |  | start no earlier than 2014-09-19 |
| 78 | 1.3.2.3 | **3.2.3实时监测** | 3d? | 2014-09-16 | 2014-09-18 |  | 77d |  |  |
| 79 | 1.3.2.3.1 | 实时数据监测 | 2d | 2014-09-16 | 2014-09-17 |  | 77d | 0d | start no earlier than 2014-09-16 |
| 80 | 1.3.2.3.2 | 单元测试与功能完善 | 1d? | 2014-09-18 | 2014-09-18 | 79 | 77d |  |  |
| 81 | 1.3.3 | 4.8测试功能完善 | 5d | 2014-10-07 | 2014-10-13 |  | 60d |  | start no earlier than 2014-10-07 |

| ID | WBS | Task | Duration | Start | Finish | Predecessors | Total slack | Free slack | Constraint | Resources | Work |
| --- | --- | --- | --- | --- | --- | --- | --- | --- | --- | --- | --- |
| 82 | 1.4 | **5.系统功能测试** | 35d | 2014-09-02 | 2014-10-20 |  | 55d |  |  |  |  |
| 83 | 1.4.1 | 编写测试方案与测试用例 | 13d | 2014-09-02 | 2014-09-18 |  | 55d | 0d | start no earlier than 2014-09-02 |  |  |
| 84 | 1.4.2 | 按照测试用例进行轮循测试 | 22d | 2014-09-19 | 2014-10-20 | 83 | 55d |  | start no earlier than 2014-09-01 |  |  |
| 85 | 1.5 | **6.系统实施** | 37d? | 2014-10-01 | 2014-11-20 |  | 32d |  |  |  |  |
| 86 | 1.5.1 | **系统实施（集团侧）** | 37d? | 2014-10-01 | 2014-11-20 |  | 32d |  |  |  |  |
| 87 | 1.5.1.1 | 安装部署手册编制 | 2d | 2014-10-01 | 2014-10-02 |  | 60d | 0d | start no earlier than 2014-10-01 |  |  |
| 88 | 1.5.1.2 | 系统使用说明书编制 | 5d | 2014-10-03 | 2014-10-09 | 87 | 60d | 0d |  |  |  |
| 89 | 1.5.1.3 | 系统软件环境搭建 | 2d | 2014-10-10 | 2014-10-13 | 88 | 60d |  |  |  |  |
| 90 | 1.5.1.4 | 数据上报接收调试 | 28d? | 2014-10-14 | 2014-11-20 |  | 32d |  | start no earlier than 2014-10-14 |  |  |
| 91 | 1.5.1.5 | **系统培训** | 5d | 2014-10-17 | 2014-10-23 |  | 52d |  |  |  |  |
| 92 | 1.5.1.5.1 | 培训手册编写 | 2d | 2014-10-17 | 2014-10-20 |  | 52d | 0d | start no earlier than 2014-10-17 |  |  |
| 93 | 1.5.1.5.2 | 现场集中培训 | 1d | 2014-10-21 | 2014-10-21 | 92 | 52d | 0d |  |  |  |
| 94 | 1.5.1.5.3 | 培训反馈与完善 | 2d | 2014-10-22 | 2014-10-23 | 93 | 52d |  |  |  |  |
| 95 | 1.6 | **7.系统上线试运行** | 31d | 2014-11-24 | 2015-01-05 |  | 0d |  |  | 王艺 | 520h |
| 96 | 1.6.1 | 系统上线试运行组织与通知 | 1d | 2014-11-24 | 2014-11-24 |  | 0d |  | start no earlier than 2014-11-24 | 王艺 | 8h |
| 97 | 1.6.2 | 上线试运行问题收集与处理反馈 | 30d | 2014-11-25 | 2015-01-05 | 96 | 0d |  |  | 王艺 | 240h |
| 98 | 1.6.3 | 上线试运行总结 | 3d | 2014-11-26 | 2014-11-28 |  | 26d |  | start no earlier than 2014-11-26 | 王艺 | 24h |
| 99 | 1.7 | **8.系统初验** | 3d | 2014-12-01 | 2014-12-03 |  | 23d |  |  |  | 16h |
| 100 | 1.7.1 | 验收材料准备 | 2d | 2014-12-01 | 2014-12-02 |  | 23d | 0d | start no earlier than 2014-12-01 | 王艺 | 16h |
| 101 | 1.7.2 | 组织验收会议 | 1d | 2014-12-03 | 2014-12-03 | 100 | 23d |  |  |  |  |
